# AGC_WorkSchedule

Schedule from MS Project, 2016-04-06 to 2016-08-27, A marks actual dates.
Microsoft

## Calendars

- Standard: Mon-Fri 08:00-12:00, 13:00-17:00; Sat 08:00-12:00, 13:00-14:00; Sun 08:00-12:00, 13:00-17:00.

## Resources

| Resource |
| --- |
| All |
| Hoang Van Canh |
| Nguyen Huu Thao |
| Soulivong Phimmathong |
| Nguyen Hoang |
| Vu Hoang Hieu |

## Schedule

| ID | WBS | Task | Type | Duration | Start | Finish | Predecessors | Complete | Remaining | Total slack | Free slack | Constraint | Resources | Work | Actual work |
| --- | --- | --- | --- | --- | --- | --- | --- | --- | --- | --- | --- | --- | --- | --- | --- |
| 1 | 1 | **AGC** |  | 135.5d? | 2016-04-06 A | 2016-08-27 |  | 14% | 116.64d? | 0d |  |  |  | 2042h | 296h |
| 2 | 1.1 | **Initiation** |  | 44.38d | 2016-04-06 A | 2016-05-23 |  | 57% | 18.86d | 91.12d |  |  |  | 432h | 296h |
| 3 | 1.1.1 | Create project concept |  | 3d | 2016-04-06 A | 2016-04-08 A |  | 100% |  |  |  | start no earlier than 2016-04-06 | All | 24h | 24h |
| 4 | 1.1.2 | Kick-off meeting | milestone | 0d | 2016-04-09 A | 2016-04-09 A |  | 100% |  |  |  | start no earlier than 2016-04-09 | All |  |  |
| 5 | 1.1.3 | Request for advisor |  | 3d | 2016-04-09 A | 2016-04-12 A | 4 | 100% |  |  |  |  | Hoang Van Canh | 24h | 24h |
| 6 | 1.1.4 | Establish team advisor | milestone | 0d | 2016-04-12 A | 2016-04-12 A | 5 | 100% |  |  |  | start no earlier than 2016-04-12 |  |  |  |
| 7 | 1.1.5 | Study system feasibility |  | 5d | 2016-04-13 A | 2016-04-18 A | 6 | 100% |  |  |  | start no earlier than 2016-04-13 | All | 40h | 40h |
| 8 | 1.1.6 | Define business situation |  | 5d | 2016-04-18 A | 2016-04-23 A | 7 | 100% |  |  |  |  | All | 40h | 40h |
| 9 | 1.1.7 | Define project and system scope | milestone | 0d | 2016-04-23 A | 2016-04-23 A | 8 | 100% |  |  |  |  | All |  |  |
| 10 | 1.1.8 | Create report no.1: Introduction |  | 4d | 2016-05-09 | 2016-05-12 |  |  |  | 97.38d | 0d | start no earlier than 2016-05-09 | Nguyen Huu Thao | 32h |  |
| 11 | 1.1.9 | Review & update report no.1 : Draft vesion |  | 3d | 2016-05-13 | 2016-05-16 | 10 |  |  | 97.38d | 0d | start no earlier than 2016-05-13 | Nguyen Huu Thao | 24h |  |
| 12 | 1.1.10 | Submit report no.1 final version | milestone | 0d | 2016-05-16 | 2016-05-16 | 11 |  |  | 97.38d |  | start no earlier than 2016-05-16 | Nguyen Huu Thao |  |  |
| 13 | 1.1.11 | **Requirements** |  | 19.5d | 2016-04-23 A | 2016-05-13 |  | 58% | 8.12d | 99.38d |  |  |  | 208h | 168h |
| 14 | 1.1.11.1 | Collect business requirements and processes |  | 7d | 2016-04-23 A | 2016-05-01 A | 8 | 100% |  |  |  | start no earlier than 2016-04-23 | Nguyen Huu Thao; Soulivong Phimmathong; Hoang Van Canh | 168h | 168h |
| 15 | 1.1.11.2 | Create draft screen prototypes |  | 3d | 2016-05-09 | 2016-05-11 |  |  |  | 99.38d | 0d | start no earlier than 2016-05-09 | Nguyen Hoang | 24h |  |
| 16 | 1.1.11.3 | Review and edit sceen prototypes |  | 2d | 2016-05-12 | 2016-05-13 | 15 |  |  | 99.38d | 0d | start no earlier than 2016-05-11 | Nguyen Hoang | 16h |  |
| 17 | 1.1.11.4 | Complete draft screen prototypes | milestone | 0d | 2016-05-13 | 2016-05-13 | 16 |  |  | 99.38d |  |  |  |  |  |
| 18 | 1.1.12 | **Project Management Plan** |  | 6.62d | 2016-05-16 | 2016-05-23 |  |  |  | 91.12d |  |  |  | 40h |  |
| 19 | 1.1.12.1 | Develop software project management plan |  | 3d | 2016-05-16 | 2016-05-18 |  |  |  | 92.75d | 0d | start no earlier than 2016-05-16 | Soulivong Phimmathong | 24h |  |
| 20 | 1.1.12.2 | Create work breakdown structure | milestone | 0d | 2016-05-19 | 2016-05-19 | 9, 19 |  |  | 92.75d | 1d | start no earlier than 2016-05-19 | Soulivong Phimmathong |  |  |
| 21 | 1.1.12.3 | Create project schedule | milestone | 0d | 2016-05-20 | 2016-05-20 | 20 |  |  | 91.75d | 0d | start no earlier than 2016-05-20 | Soulivong Phimmathong |  |  |
| 22 | 1.1.12.4 | Review and update project management plan |  | 2d | 2016-05-20 | 2016-05-22 | 21 |  |  | 91.75d | 0.62d |  | Soulivong Phimmathong | 16h |  |
| 23 | 1.1.12.5 | Submit report no. 2 final version | milestone | 0d | 2016-05-23 | 2016-05-23 | 22 |  |  | 91.12d |  | start no earlier than 2016-05-23 | Soulivong Phimmathong |  |  |
| 24 | 1.2 | **Solution** |  | 31.5d | 2016-05-23 | 2016-06-24 |  |  |  | 59.62d |  |  |  | 760h |  |
| 25 | 1.2.1 | **User Requirements Specification** |  | 8.62d | 2016-05-23 | 2016-06-01 |  |  |  | 82.5d |  |  |  | 56h |  |
| 26 | 1.2.1.1 | Create draft requirements |  | 3d | 2016-05-23 | 2016-05-25 |  |  |  | 88.12d | 0d | start no earlier than 2016-05-23 | Nguyen Huu Thao | 24h |  |
| 27 | 1.2.1.2 | Complete draft requirements | milestone | 0d | 2016-05-25 | 2016-05-25 | 26 |  |  | 88.12d |  | start no earlier than 2016-05-24 |  |  |  |
| 28 | 1.2.1.3 | Develop Use-case model |  | 2d | 2016-05-27 | 2016-05-29 |  |  |  | 85.12d |  | start no earlier than 2016-05-27 | All | 16h |  |
| 29 | 1.2.1.4 | Develop main functions and processes |  | 2d | 2016-05-30 | 2016-05-31 |  |  |  | 82.5d | 0d | start no earlier than 2016-05-30 | All | 16h |  |
| 30 | 1.2.1.5 | Complete main functions and processes | milestone | 0d | 2016-06-01 | 2016-06-01 | 29 |  |  | 82.5d |  | start no earlier than 2016-06-01 |  |  |  |

| ID | WBS | Task | Type | Duration | Start | Finish | Predecessors | Total slack | Free slack | Constraint | Resources | Work |
| --- | --- | --- | --- | --- | --- | --- | --- | --- | --- | --- | --- | --- |
| 31 | 1.2.2 | **Software Requirements Specification** |  | 5.62d | 2016-06-01 | 2016-06-07 |  | 64.5d | 0d |  |  | 272h |
| 32 | 1.2.2.1 | **Non-functional Requirements Specification** |  | 4d | 2016-06-01 | 2016-06-05 |  | 69.5d |  |  |  | 112h |
| 33 | 1.2.2.1.1 | Develop User Interface requirements |  | 4d | 2016-06-01 | 2016-06-05 |  | 69.5d |  | start no earlier than 2016-06-01 | Vu Hoang Hieu; Nguyen Hoang | 64h |
| 34 | 1.2.2.1.2 | Develop Performance requirements |  | 2d | 2016-06-01 | 2016-06-02 |  | 71.5d |  | start no earlier than 2016-06-01 | Nguyen Huu Thao; Soulivong Phimmathong; Hoang Van Canh | 48h |
| 35 | 1.2.2.2 | Develop Entity Relationship Diagram (ERD) |  | 4d | 2016-06-01 | 2016-06-05 |  | 64.5d | 0.62d | start no earlier than 2016-06-01 | Hoang Van Canh; Soulivong Phimmathong; Vu Hoang Hieu; Nguyen Hoang | 128h |
| 36 | 1.2.2.3 | Complete ERD | milestone | 0d | 2016-06-06 | 2016-06-06 | 35 | 68.88d |  | start no earlier than 2016-06-06 |  |  |
| 37 | 1.2.2.4 | Create report no.3 software requirements specification |  | 2d | 2016-06-01 | 2016-06-02 |  | 69.5d | 1d | start no earlier than 2016-06-01 | Nguyen Huu Thao | 16h |
| 38 | 1.2.2.5 | Revise Report no.3 draft version |  | 2d | 2016-06-04 | 2016-06-06 | 37 | 68.5d | 0.62d | start no earlier than 2016-06-04 | Nguyen Huu Thao | 16h |
| 39 | 1.2.2.6 | Submit report no.3 final version | milestone | 0d | 2016-06-07 | 2016-06-07 | 38 | 67.88d |  | start no earlier than 2016-06-07 | Nguyen Huu Thao |  |
| 40 | 1.2.3 | **Design** |  | 18.25d | 2016-06-06 | 2016-06-24 |  | 50.62d | 0d |  |  | 432h |
| 41 | 1.2.3.1 | Create Design Overview |  | 2d | 2016-06-07 | 2016-06-08 |  | 65.88d |  | start no earlier than 2016-06-07 | Vu Hoang Hieu; Nguyen Hoang | 32h |
| 42 | 1.2.3.2 | Define the system structure and collect system features |  | 4d | 2016-06-09 | 2016-06-13 |  | 61.88d |  | start no earlier than 2016-06-09 | Vu Hoang Hieu; Nguyen Hoang | 64h |
| 43 | 1.2.3.3 | **Detailed Design** |  | 18.25d | 2016-06-06 | 2016-06-24 |  | 50.62d |  |  |  | 336h |
| 44 | 1.2.3.3.1 | Develop detail database design |  | 5d | 2016-06-06 | 2016-06-10 | 35 | 63.88d | 0d | start no earlier than 2016-06-06 | Vu Hoang Hieu; Nguyen Hoang | 80h |
| 45 | 1.2.3.3.2 | Complete detail database design | milestone | 0d | 2016-06-10 | 2016-06-10 | 44 | 63.88d |  |  |  |  |
| 46 | 1.2.3.3.3 | **Component Diagram** |  | 6.62d | 2016-06-09 | 2016-06-15 |  | 56.25d | 0d |  |  | 96h |
| 47 | 1.2.3.3.3.1 | Define the component |  | 1d | 2016-06-09 | 2016-06-09 |  | 56.88d | 0d | start no earlier than 2016-06-09 | Vu Hoang Hieu; Nguyen Hoang | 16h |
| 48 | 1.2.3.3.3.2 | General component diagram |  | 2d | 2016-06-10 | 2016-06-12 | 47 | 56.88d | 0.62d |  | Vu Hoang Hieu; Nguyen Hoang | 32h |
| 49 | 1.2.3.3.3.3 | Detail component diagram |  | 3d | 2016-06-13 | 2016-06-15 | 48 | 56.25d |  | start no earlier than 2016-06-13 | Vu Hoang Hieu; Nguyen Hoang | 48h |
| 50 | 1.2.3.3.4 | **Detailed description of components** |  | 3d | 2016-06-16 | 2016-06-19 | 46 | 56.25d |  |  |  | 96h |
| 51 | 1.2.3.3.4.1 | Create Class diagram |  | 3d | 2016-06-16 | 2016-06-19 |  | 56.25d |  | start no earlier than 2016-06-16 | Vu Hoang Hieu; Nguyen Hoang | 48h |
| 52 | 1.2.3.3.4.2 | Detail description of component (Client component) |  | 3d | 2016-06-16 | 2016-06-19 |  | 56.25d |  | start no earlier than 2016-06-06 | Vu Hoang Hieu; Nguyen Hoang | 48h |
| 53 | 1.2.3.3.5 | User Interface Design |  | 3d | 2016-06-16 | 2016-06-19 |  | 56.25d |  | start no earlier than 2016-06-16 | Vu Hoang Hieu; Nguyen Hoang | 48h |
| 54 | 1.2.3.3.6 | Develop report no.4 software design description |  | 3d | 2016-06-20 | 2016-06-22 |  | 50.62d | 0d | start no earlier than 2016-06-20 |  |  |
| 55 | 1.2.3.3.7 | Review and update comments report no.4 |  | 2d | 2016-06-23 | 2016-06-24 | 54 | 50.62d | 0d | start no earlier than 2016-06-21 | Nguyen Huu Thao | 16h |
| 56 | 1.2.3.3.8 | Submit report no.4 final version | milestone | 0d | 2016-06-24 | 2016-06-24 | 55 | 50.62d |  | start no earlier than 2016-06-23 | Nguyen Huu Thao |  |

| ID | WBS | Task | Type | Duration | Start | Finish | Predecessors | Total slack | Free slack | Constraint | Resources | Work |
| --- | --- | --- | --- | --- | --- | --- | --- | --- | --- | --- | --- | --- |
| 57 | 1.3 | **Construction** |  | 52d | 2016-06-07 | 2016-08-01 |  | 24.88d |  |  |  | 696h |
| 58 | 1.3.1 | **Requirements & Design** |  | 19.25d | 2016-06-07 | 2016-06-27 |  | 50.62d | 0d |  |  | 32h |
| 59 | 1.3.1.1 | Refine requirement documents |  | 2d | 2016-06-07 | 2016-06-08 | 31 | 67.88d |  | start no earlier than 2016-06-07 | Nguyen Huu Thao | 16h |
| 60 | 1.3.1.2 | Refine design documents |  | 2d | 2016-06-25 | 2016-06-27 | 40 | 50.62d |  | start no earlier than 2016-06-24 | Nguyen Huu Thao | 16h |
| 61 | 1.3.2 | **Coding & Unit Test** |  | 11.88d | 2016-06-27 | 2016-07-10 | 58 | 45.75d |  |  |  | 448h |
| 62 | 1.3.2.1 | User module |  | 7d | 2016-06-27 | 2016-07-04 |  | 50.62d |  | start no earlier than 2016-06-27 | Hoang Van Canh; Vu Hoang Hieu | 112h |
| 63 | 1.3.2.2 | Restaurant owner module |  | 7d | 2016-06-27 | 2016-07-04 |  | 50.62d |  | start no earlier than 2016-06-27 | Soulivong Phimmathong; Nguyen Hoang | 112h |
| 64 | 1.3.2.3 | Admin Module |  | 7d | 2016-07-02 | 2016-07-09 |  | 46d |  | start no earlier than 2016-07-02 | Soulivong Phimmathong; Nguyen Hoang | 112h |
| 65 | 1.3.2.4 | Test Module |  | 7d | 2016-07-02 | 2016-07-09 |  | 46d |  | start no earlier than 2016-07-02 | Hoang Van Canh; Vu Hoang Hieu | 112h |
| 66 | 1.3.2.5 | Complete coding | milestone | 0d | 2016-07-10 | 2016-07-10 |  | 45.75d |  | start no earlier than 2016-07-10 |  |  |
| 67 | 1.3.3 | **Testing** |  | 15.88d | 2016-07-08 | 2016-07-25 |  | 31.5d |  |  |  | 184h |
| 68 | 1.3.3.1 | **Create test documents (Report 5)** |  | 12.25d | 2016-07-08 | 2016-07-21 |  | 35.12d | 3.62d |  |  | 136h |
| 69 | 1.3.3.1.1 | Create test plan |  | 2d | 2016-07-08 | 2016-07-10 |  | 45.38d |  | start no earlier than 2016-07-08 | Nguyen Hoang; Nguyen Huu Thao | 32h |
| 70 | 1.3.3.1.2 | Create test cases |  | 2d | 2016-07-11 | 2016-07-12 |  | 42.75d |  | start no earlier than 2016-07-11 | Nguyen Hoang; Nguyen Huu Thao | 32h |
| 71 | 1.3.3.1.3 | Create test checklist |  | 1d | 2016-07-12 | 2016-07-12 |  | 42.75d |  | start no earlier than 2016-07-12 | Nguyen Hoang; Nguyen Huu Thao | 16h |
| 72 | 1.3.3.1.4 | Develop report no.5 software test documentation |  | 5d | 2016-07-13 | 2016-07-18 |  | 35.75d | 0d | start no earlier than 2016-07-13 | Nguyen Huu Thao | 40h |
| 73 | 1.3.3.1.5 | Review report no.5 |  | 2d | 2016-07-18 | 2016-07-20 | 72 | 35.75d |  | start no earlier than 2016-07-15 | Nguyen Huu Thao | 16h |
| 74 | 1.3.3.1.6 | Submit report no.5 final version | milestone | 0d | 2016-07-21 | 2016-07-21 |  | 35.12d |  | start no earlier than 2016-07-21 | Nguyen Huu Thao |  |
| 75 | 1.3.3.2 | Execute functional test |  | 3d | 2016-07-19 | 2016-07-21 |  | 34.12d |  | start no earlier than 2016-07-19 | Nguyen Hoang | 24h |
| 76 | 1.3.3.3 | Execute regression test |  | 3d | 2016-07-20 | 2016-07-22 |  | 33.12d |  | start no earlier than 2016-07-20 | Nguyen Hoang | 24h |
| 77 | 1.3.3.4 | Deliver tested codes (Code demo 1) | milestone | 0d | 2016-07-25 | 2016-07-25 | 68 | 31.5d |  | start no earlier than 2016-07-25 | Nguyen Hoang |  |
| 78 | 1.3.4 | Create report no.6 -Software User's Manual |  | 2d | 2016-07-24 | 2016-07-25 |  | 28.5d | 2d | start no earlier than 2016-07-24 | Soulivong Phimmathong | 16h |
| 79 | 1.3.5 | Review & update report no.6 |  | 2d | 2016-07-28 | 2016-07-29 | 78 | 26.5d |  | start no earlier than 2016-07-28 | Soulivong Phimmathong | 16h |
| 80 | 1.3.6 | Submit report no.6 final version | milestone | 0d | 2016-08-01 | 2016-08-01 |  | 24.88d |  | start no earlier than 2016-08-01 | Soulivong Phimmathong |  |

| ID | WBS | Task | Type | Duration | Start | Finish | Predecessors | Total slack | Free slack | Constraint | Resources | Work |
| --- | --- | --- | --- | --- | --- | --- | --- | --- | --- | --- | --- | --- |
| 81 | 1.4 | **Transition** |  | 23.88d? | 2016-08-02 | 2016-08-27 |  | 0d |  |  |  | 154h |
| 82 | 1.4.1 | **Preclosing** |  | 2d | 2016-08-02 | 2016-08-04 |  | 21.88d |  |  |  | 8h |
| 83 | 1.4.1.1 | Conduct project review-lessons learned |  | 1d | 2016-08-02 | 2016-08-02 |  | 22.88d | 1d | start no earlier than 2016-08-02 | All | 8h |
| 84 | 1.4.1.2 | Submit all documents and CD source code last version | milestone | 0d | 2016-08-04 | 2016-08-04 | 83 | 21.88d |  | start no earlier than 2016-08-04 | Soulivong Phimmathong |  |
| 85 | 1.4.2 | **Closing** |  | 18.25d? | 2016-08-08 | 2016-08-27 |  | 0d |  |  |  | 146h |
| 86 | 1.4.2.1 | Prepare for presentation |  | 18.25d? | 2016-08-08 | 2016-08-26 |  | 0d |  | finish no earlier than 2016-08-26 | All | 146h |
| 87 | 1.4.2.2 | Represent capstone project and close the project | milestone | 0d | 2016-08-27 | 2016-08-27 | 86 | 0d |  | start no earlier than 2016-08-27 | All |  |
